Schedule from MS Project, 2009-06-02 to 2009-06-02.

## Calendars

- Estándar: Mon-Fri 09:00-13:00, 15:00-19:00; Sat-Sun off.

## Schedule

| ID | WBS | Task | Type | Duration | Start | Finish | Total slack |
| --- | --- | --- | --- | --- | --- | --- | --- |
| 1 | 1 | **Vestuario** |  | 1d? | 2009-06-02 | 2009-06-02 | 0d |
| 2 | 1.1 | **Vestuario del novio** |  | 1d? | 2009-06-02 | 2009-06-02 | 0d |
| 3 | 1.1.1 | Concertar cita previa |  | 1d? | 2009-06-02 | 2009-06-02 | 0d |
| 4 | 1.1.2 | Selección de posibilidades |  | 1d? | 2009-06-02 | 2009-06-02 | 0d |
| 5 | 1.1.3 | Elección traje definitivo |  | 1d? | 2009-06-02 | 2009-06-02 | 0d |
| 6 | 1.1.4 | Selección de complementos |  | 1d? | 2009-06-02 | 2009-06-02 | 0d |
| 7 | 1.1.5 | Elección definitiva de complementos |  | 1d? | 2009-06-02 | 2009-06-02 | 0d |
| 8 | 1.1.6 | Firma de contrato modista | milestone | 0d | 2009-06-02 | 2009-06-02 | 1d |
| 9 | 1.1.7 | Realización de arreglos |  | 1d? | 2009-06-02 | 2009-06-02 | 0d |
| 10 | 1.1.8 | Prueba de arreglos |  | 1d? | 2009-06-02 | 2009-06-02 | 0d |
| 11 | 1.1.9 | Entrega del traje | milestone | 0d | 2009-06-02 | 2009-06-02 | 1d |
| 12 | 1.2 | **Vestuario de la novia** |  | 1d? | 2009-06-02 | 2009-06-02 | 0d |
| 13 | 1.2.1 | Concertar cita previa |  | 1d? | 2009-06-02 | 2009-06-02 | 0d |
| 14 | 1.2.2 | Selección de posibilidades |  | 1d? | 2009-06-02 | 2009-06-02 | 0d |
| 15 | 1.2.3 | Elección traje definitivo |  | 1d? | 2009-06-02 | 2009-06-02 | 0d |
| 16 | 1.2.4 | Selección de complementos |  | 1d? | 2009-06-02 | 2009-06-02 | 0d |
| 17 | 1.2.5 | Elección definitiva de complementos |  | 1d? | 2009-06-02 | 2009-06-02 | 0d |
| 18 | 1.2.6 | Firma de contrato modista | milestone | 0d | 2009-06-02 | 2009-06-02 | 1d |
| 19 | 1.2.7 | Realización de arreglos |  | 1d? | 2009-06-02 | 2009-06-02 | 0d |
| 20 | 1.2.8 | Prueba de arregos |  | 1d? | 2009-06-02 | 2009-06-02 | 0d |
| 21 | 1.2.9 | Entrega del traje | milestone | 0d | 2009-06-02 | 2009-06-02 | 1d |
| 22 | 1.3 | Cobro de vestuario |  | 1d? | 2009-06-02 | 2009-06-02 | 0d |
| 23 | 1.4 | Pago de vestuario |  | 1d? | 2009-06-02 | 2009-06-02 | 0d |
| 24 | 1.5 | Cierre contrato vestuario | milestone | 0d | 2009-06-02 | 2009-06-02 | 1d |

| ID | WBS | Task | Type | Duration | Start | Finish | Total slack |
| --- | --- | --- | --- | --- | --- | --- | --- |
| 25 | 2 | **Anillos** |  | 1d? | 2009-06-02 | 2009-06-02 | 0d |
| 26 | 2.1 | Concertar cita previa |  | 1d? | 2009-06-02 | 2009-06-02 | 0d |
| 27 | 2.2 | Selección de posiblidades |  | 1d? | 2009-06-02 | 2009-06-02 | 0d |
| 28 | 2.3 | Elección modelo definitivo |  | 1d? | 2009-06-02 | 2009-06-02 | 0d |
| 29 | 2.4 | Firma de contrato joyería | milestone | 0d | 2009-06-02 | 2009-06-02 | 1d |
| 30 | 2.5 | Arreglos y grabados |  | 1d? | 2009-06-02 | 2009-06-02 | 0d |
| 31 | 2.6 | Prueba de arregos |  | 1d? | 2009-06-02 | 2009-06-02 | 0d |
| 32 | 2.7 | Entrega de alianzas | milestone | 0d | 2009-06-02 | 2009-06-02 | 1d |
| 33 | 2.8 | Cobro de alianzas |  | 1d? | 2009-06-02 | 2009-06-02 | 0d |
| 34 | 2.9 | Pago de alianzas |  | 1d? | 2009-06-02 | 2009-06-02 | 0d |
| 35 | 2.10 | Cierre contrato alianzas | milestone | 0d | 2009-06-02 | 2009-06-02 | 1d |
| 36 | 3 | **Peinado** |  | 1d? | 2009-06-02 | 2009-06-02 | 0d |
| 37 | 3.1 | Concertar cita previa |  | 1d? | 2009-06-02 | 2009-06-02 | 0d |
| 38 | 3.2 | Selección de posiblidades |  | 1d? | 2009-06-02 | 2009-06-02 | 0d |
| 39 | 3.3 | Prueba de posiblidades |  | 1d? | 2009-06-02 | 2009-06-02 | 0d |
| 40 | 3.4 | Selección de peinado definitivo |  | 1d? | 2009-06-02 | 2009-06-02 | 0d |
| 41 | 3.5 | Peinado definitivo elegido |  | 1d? | 2009-06-02 | 2009-06-02 | 0d |
| 42 | 3.6 | Firma de contrato peinado | milestone | 0d | 2009-06-02 | 2009-06-02 | 1d |
| 43 | 3.7 | Servicio de peluquería |  | 1d? | 2009-06-02 | 2009-06-02 | 0d |
| 44 | 3.8 | Cobro de peluquería |  | 1d? | 2009-06-02 | 2009-06-02 | 0d |
| 45 | 3.9 | Pago de peluquería |  | 1d? | 2009-06-02 | 2009-06-02 | 0d |
| 46 | 3.10 | Cierre contrato peluquería | milestone | 0d | 2009-06-02 | 2009-06-02 | 1d |
| 47 | 4 | **Fotografía** |  | 1d? | 2009-06-02 | 2009-06-02 | 0d |
| 48 | 4.1 | Concertar cita previa |  | 1d? | 2009-06-02 | 2009-06-02 | 0d |
| 49 | 4.2 | Selección de album |  | 1d? | 2009-06-02 | 2009-06-02 | 0d |
| 50 | 4.3 | Firma contrato fotógrafo | milestone | 0d | 2009-06-02 | 2009-06-02 | 1d |
| 51 | 4.4 | Realización fotos estudio |  | 1d? | 2009-06-02 | 2009-06-02 | 0d |
| 52 | 4.5 | Realización reportaje fotográfico |  | 1d? | 2009-06-02 | 2009-06-02 | 0d |
| 53 | 4.6 | Cobro servicio fotográfico |  | 1d? | 2009-06-02 | 2009-06-02 | 0d |
| 54 | 4.7 | Pago servicio fotográfico |  | 1d? | 2009-06-02 | 2009-06-02 | 0d |
| 55 | 4.8 | Entrega reportaje fotográfico | milestone | 0d | 2009-06-02 | 2009-06-02 | 1d |
| 56 | 4.9 | Cierre contrato fotógrafo | milestone | 0d | 2009-06-02 | 2009-06-02 | 1d |

| ID | WBS | Task | Type | Duration | Start | Finish | Total slack |
| --- | --- | --- | --- | --- | --- | --- | --- |
| 57 | 5 | **Flores y decoración** |  | 1d? | 2009-06-02 | 2009-06-02 | 0d |
| 58 | 5.1 | Concertar cita previa |  | 1d? | 2009-06-02 | 2009-06-02 | 0d |
| 59 | 5.2 | Selección del tipo de decoración |  | 1d? | 2009-06-02 | 2009-06-02 | 0d |
| 60 | 5.3 | Selección tipo plantas |  | 1d? | 2009-06-02 | 2009-06-02 | 0d |
| 61 | 5.4 | Selección ramo novia |  | 1d? | 2009-06-02 | 2009-06-02 | 0d |
| 62 | 5.5 | Firma contrato floristería |  | 1d? | 2009-06-02 | 2009-06-02 | 0d |
| 63 | 5.6 | Instalación decoración iglesia |  | 1d? | 2009-06-02 | 2009-06-02 | 0d |
| 64 | 5.7 | Entrega ramo novia | milestone | 0d | 2009-06-02 | 2009-06-02 | 1d |
| 65 | 5.8 | Cierre contrato floristería | milestone | 0d | 2009-06-02 | 2009-06-02 | 1d |
| 66 | 6 | **Papelería y regalos** |  | 1d? | 2009-06-02 | 2009-06-02 | 0d |
| 67 | 6.1 | **Invitaciones** |  | 1d? | 2009-06-02 | 2009-06-02 | 0d |
| 68 | 6.1.1 | Elaboración lista invitados |  | 1d? | 2009-06-02 | 2009-06-02 | 0d |
| 69 | 6.1.2 | Elaboración lista bodas |  | 1d? | 2009-06-02 | 2009-06-02 | 0d |
| 70 | 6.1.3 | Concertar cita previa |  | 1d? | 2009-06-02 | 2009-06-02 | 0d |
| 71 | 6.1.4 | Selección tipo invitación |  | 1d? | 2009-06-02 | 2009-06-02 | 0d |
| 72 | 6.1.5 | Selección texto invitación |  | 1d? | 2009-06-02 | 2009-06-02 | 0d |
| 73 | 6.1.6 | Firma contrato papelería | milestone | 0d | 2009-06-02 | 2009-06-02 | 1d |
| 74 | 6.1.7 | Envío invitaciones |  | 1d? | 2009-06-02 | 2009-06-02 | 0d |
| 75 | 6.1.8 | Cierre contrato papelería | milestone | 0d | 2009-06-02 | 2009-06-02 | 1d |
| 76 | 6.2 | **Regalo madrina** |  | 1d? | 2009-06-02 | 2009-06-02 | 0d |
| 77 | 6.2.1 | Concertar cita previa |  | 1d? | 2009-06-02 | 2009-06-02 | 0d |
| 78 | 6.2.2 | Selección regalo |  | 1d? | 2009-06-02 | 2009-06-02 | 0d |
| 79 | 6.2.3 | Firma contrato regalos madrina | milestone | 0d | 2009-06-02 | 2009-06-02 | 1d |
| 80 | 6.2.4 | Entrega regalos madrina |  | 1d? | 2009-06-02 | 2009-06-02 | 0d |
| 81 | 6.2.5 | Cierre contrato regalo madrina | milestone | 0d | 2009-06-02 | 2009-06-02 | 1d |

| ID | WBS | Task | Type | Duration | Start | Finish | Total slack |
| --- | --- | --- | --- | --- | --- | --- | --- |
| 82 | 6.3 | **Regalo padrino** |  | 1d? | 2009-06-02 | 2009-06-02 | 0d |
| 83 | 6.3.1 | Concertar cita previa |  | 1d? | 2009-06-02 | 2009-06-02 | 0d |
| 84 | 6.3.2 | Selección regalo |  | 1d? | 2009-06-02 | 2009-06-02 | 0d |
| 85 | 6.3.3 | Firma contrato regalo padrino | milestone | 0d | 2009-06-02 | 2009-06-02 | 1d |
| 86 | 6.3.4 | Entrega regalos padrino |  | 1d? | 2009-06-02 | 2009-06-02 | 0d |
| 87 | 6.3.5 | Cierre contrato regalo padrino | milestone | 0d | 2009-06-02 | 2009-06-02 | 1d |
| 88 | 7 | Orquesta y música |  | 1d? | 2009-06-02 | 2009-06-02 | 0d |
| 89 | 8 | Transporte |  | 1d? | 2009-06-02 | 2009-06-02 | 0d |
| 90 | 9 | Trámites administrativos |  | 1d? | 2009-06-02 | 2009-06-02 | 0d |
| 91 | 10 | Noche de bodas |  | 1d? | 2009-06-02 | 2009-06-02 | 0d |
| 92 | 11 | Organización banquete |  | 1d? | 2009-06-02 | 2009-06-02 | 0d |
